@startgantt
' Оценки из roadmap v3.1. Ось начинается условно; это не обещанные даты релиза.
' PlantUML не показывает половину дня: 0.5 и 1.5 округлены вверх только в полосах.

title exact-orb — M1 и M2, оценка оставшейся работы
Project starts 2026-09-15
printscale weekly zoom 2
Label on first column
saturday are closed
sunday are closed

-- M1. Карта с UI на удалённом сервере — 22 рабочих дня --

[M1-1 ADR: данные рождения и соглашение — 0.5 дн.] as [M11] lasts 1 day
[M1-2 Application Orchestrator — 1.5 дн.] as [M12] lasts 2 days
[M12] starts at [M11]'s end
[M1-3 Bootstrap composition — 0.5 дн.] as [M13] lasts 1 day
[M13] starts at [M12]'s end
[M1-4 Import boundary handler — 0.5 дн.] as [M14] lasts 1 day
[M14] starts at [M13]'s end
[M1-5 Каталог place_id и поиск — 2 дн.] as [M15] lasts 2 days
[M15] starts at [M14]'s end
[M1-6 FastAPI и Session Middleware — 2 дн.] as [M16] lasts 2 days
[M16] starts at [M15]'s end
[M1-7 UI: форма и таблицы фактов — 2 дн.] as [M17] lasts 2 days
[M17] starts at [M16]'s end
[M1-8 SVG-колесо карты — 5 дн.] as [M18] lasts 5 days
[M18] starts at [M17]'s end
[M1-9 Условия использования — 1 дн.] as [M19] lasts 1 day
[M19] starts at [M18]'s end
[M1-10 Benchmark natal/cosmogram — 1 дн.] as [M110] lasts 1 day
[M110] starts at [M19]'s end
[M1-11 CI на Linux — 0.5 дн.] as [M111] lasts 1 day
[M111] starts at [M110]'s end
[M1-12 Окружение сервера — 1 дн.] as [M112] lasts 1 day
[M112] starts at [M111]'s end
[M1-13 Деплой, TLS и автозапуск — 2 дн.] as [M113] lasts 2 days
[M113] starts at [M112]'s end
[M1-14 Сквозная приёмка — 1.5 дн.] as [M114] lasts 2 days
[M114] starts at [M113]'s end
[M1-15 Фиксы первого релиза — 1 дн.] as [M115] lasts 1 day
[M115] starts at [M114]'s end
[M1 готов: карта работает в UI на сервере] as [M1DONE] happens at [M115]'s end
[M1DONE] is colored in Green

-- M2. Первая интерпретация коротким путём — 12.5 рабочего дня + содержание --

[M2-1 ADR прямого interpretation path — 0.5 дн.] as [M21] lasts 1 day
[M21] starts at [M115]'s end
[M2-2 DataSelector — 3 дн.] as [M22] lasts 3 days
[M22] starts at [M21]'s end
[M2-3 PromptBuilder и Registry — 2 дн.] as [M23] lasts 2 days
[M23] starts at [M22]'s end
[M2-4 Interpretation handler — 1.5 дн.] as [M24] lasts 2 days
[M24] starts at [M23]'s end
[M2-5 OutputGuard — 1 дн.] as [M25] lasts 1 day
[M25] starts at [M24]'s end
[M2-6 Admission и budget — 2 дн.] as [M26] lasts 2 days
[M26] starts at [M25]'s end
[M2-7 UI интерпретации — 1 дн.] as [M27] lasts 1 day
[M27] starts at [M26]'s end
[M2-8 Eval и приёмка — 1.5 дн.] as [M28] lasts 2 days
[M28] starts at [M27]'s end
[M2 содержание: обязательный минимум — 10 дн.] as [M2C10] lasts 10 days
[M2C10] starts at [M28]'s end
[M2C10] is colored in LightBlue
[M2 готов по нижней оценке — 10 дн. содержания] as [M2EARLY] happens at [M2C10]'s end
[M2EARLY] is colored in Green
[M2 содержание: резерв до верхней оценки — +10 дн.] as [M2C20] lasts 10 days
[M2C20] starts at [M2C10]'s end
[M2C20] is colored in Wheat
[M2 готов по верхней оценке — 20 дн. содержания] as [M2DONE] happens at [M2C20]'s end
[M2DONE] is colored in Green

[M3 подробно на третьей диаграмме — предварительно 36 дн.] as [M3OPEN] happens at [M2C20]'s end
[M3OPEN] is colored in Gray

legend bottom
  Ось начинается 15.09 только для последовательного отображения; это не дата старта или релиза.
  Точные оценки: M1 = 22 рабочих дня; M2 каркас = 12.5; содержание M2 = 10–20.
  Первые 10 дней содержания обязательны; вторая полоса показывает резерв до верхней оценки.
  Полосы 0.5/1.5 дня округлены вверх до целого рабочего дня из-за ограничения PlantUML.
  Выходные на условной оси закрыты. Исполнитель один; задачи идут последовательно.
  M3 начинается после M2 и подробно показан на третьей диаграмме файла.
endlegend
@endgantt
